# caintegrator_project_plan_v3

Schedule from MS Project, 2011-08-01 to 2012-08-08, A marks actual dates.
NIH\NCI

## Calendars

- Standard: Mon-Fri 08:00-12:00, 13:00-17:00; Sat-Sun off. Exceptions (off unless hours are given): 2011-09-05, 2011-11-11, 2011-11-24 to 2011-11-25, 2011-12-26.

## Resources

| Resource |
| --- |
| JP |
| TBH |
| SJ/JP |
| Qut |
| Quy |
| SJ |
| HS |
| Systems |
| MAX |
| system |
| Secuirity Team |
| Coung/Systems |
| will |
| 45 |
| Andy |
| WF |

## Schedule

| ID | WBS | Task | Type | Duration | Start | Finish | Predecessors | Complete | Constraint | Resources | Work | Actual work |
| --- | --- | --- | --- | --- | --- | --- | --- | --- | --- | --- | --- | --- |
| 1 | 1 | **Adhoc Generic Support** |  | 16d | 2011-08-01 A | 2011-08-22 A |  | 100% |  |  |  |  |
| 2 | 1.1 | TCGA Data Support |  | 2d | 2011-08-01 A | 2011-08-02 A |  | 100% |  |  |  |  |
| 3 | 1.2 | TCGA Data on caIntegrator |  | 4d | 2011-08-17 A | 2011-08-22 A |  | 100% | start no earlier than 2011-08-17 |  |  |  |
| 4 | 1.3 | MATKC Support | milestone | 0d | 2011-08-01 A | 2011-08-01 A |  | 100% |  |  |  |  |
| 5 | 2 | **CaIntegrator Version 1.3.1** |  | 73d? | 2011-08-15 A | 2011-11-29 A |  | 100% |  |  | 718.86h | 718.86h |
| 6 | 2.1 | **JIRA CAINT-1011 508 Compliance** |  | 13d | 2011-08-15 A | 2011-08-31 A |  | 100% |  |  | 56h | 56h |
| 7 | 2.1.1 | Common Accenture Profile Dev/QA |  | 1d | 2011-08-15 A | 2011-08-15 A |  | 100% | start no earlier than 2011-08-15 | Quy | 8h | 8h |
| 8 | 2.1.2 | Identify 508 issues to be fixed and create JIRA user story tasks for each on DEV and QA. |  | 3d | 2011-08-22 A | 2011-08-24 A | 7 | 100% |  | JP | 24h | 24h |
| 9 | 2.1.3 | Fix TABLE tag in caBIO search form. |  | 0.5d | 2011-08-29 A | 2011-08-29 A | 8 | 100% |  | JP | 4h | 4h |
| 10 | 2.1.4 | Fix TABLE tag in gene list search form. |  | 0.5d | 2011-08-29 A | 2011-08-29 A | 9 | 100% |  | JP | 4h | 4h |
| 11 | 2.1.5 | Fix ALT tags in caBIO search form |  | 0.5d | 2011-08-30 A | 2011-08-30 A | 10 | 100% |  | JP | 4h | 4h |
| 12 | 2.1.6 | Fix ALT tags in study summary page |  | 0.5d | 2011-08-30 A | 2011-08-30 A | 11 | 100% |  | JP | 4h | 4h |
| 13 | 2.1.7 | Fix TABLE header in registeration page |  | 0.5d | 2011-08-31 A | 2011-08-31 A | 12 | 100% |  | JP | 4h | 4h |
| 14 | 2.1.8 | Fix TABLE in study summary page. |  | 0.5d | 2011-08-31 A | 2011-08-31 A | 13 | 100% |  | JP | 4h | 4h |
| 15 | 2.2 | **Ongoing maintenance and bug fixes** |  | 18d? | 2011-08-31 A | 2011-09-26 A |  | 100% |  |  | 64h | 64h |
| 16 | 2.2.1 | ADF platform issues |  | 2d | 2011-08-31 A | 2011-09-01 A |  | 100% | start no earlier than 2011-08-31 | JP | 16h | 16h |
| 17 | 2.2.2 | ECAT Prep |  | 2d | 2011-09-02 A | 2011-09-06 A | 16 | 100% |  | SJ; JP | 32h | 32h |
| 18 | 2.2.3 | prepare a point release for section 508 compliance. |  | 2d | 2011-09-19 A | 2011-09-20 A |  | 100% | start no earlier than 2011-09-19 | JP | 16h | 16h |
| 19 | 2.2.4 | Bug fix for typo error and new tag (RC2) |  | 1d? | 2011-09-26 A | 2011-09-26 A |  | 100% |  |  |  |  |
| 20 | 2.3 | QA RC1 |  | 7d | 2011-09-21 A | 2011-09-29 A | 18 | 100% |  | HS | 56h | 56h |
| 21 | 2.4 | **JIRA-CAINT-1047 - Resolve Appscan Issues** |  | 26d | 2011-09-30 A | 2011-11-04 A |  | 100% |  | HS | 424h | 424h |
| 22 | 2.4.1 | Resolve existing medium issues |  | 2d | 2011-09-30 A | 2011-10-03 A | 20 | 100% |  | JP | 16h | 16h |
| 23 | 2.4.2 | Run Appscan |  | 1d | 2011-10-03 A | 2011-10-03 A |  | 100% | start no earlier than 2011-10-03 | Secuirity Team | 8h | 8h |
| 24 | 2.4.3 | Fix medium issues |  | 7d | 2011-10-04 A | 2011-10-12 A | 23 | 100% |  | JP | 56h | 56h |
| 25 | 2.4.4 | Run new Appscan to verify |  | 1d | 2011-10-13 A | 2011-10-13 A | 24 | 100% |  | JP | 8h | 8h |
| 26 | 2.4.5 | Fix all additional medium issues |  | 9d | 2011-10-14 A | 2011-10-26 A | 25 | 100% |  | JP | 72h | 72h |
| 27 | 2.4.6 | Run new Appscan to verify |  | 1d | 2011-10-27 A | 2011-10-27 A | 26 | 100% |  | Systems | 8h | 8h |
| 28 | 2.4.7 | Fix issues from Appscan |  | 2d | 2011-10-28 A | 2011-10-31 A | 27 | 100% |  | JP | 16h | 16h |
| 29 | 2.4.8 | Full Appscan to verify |  | 1d | 2011-11-01 A | 2011-11-01 A | 28 | 100% |  | Systems | 8h | 8h |
| 30 | 2.4.9 | JIRA-CAINT-1066 - Bug fix (Ajax token missing) |  | 2d | 2011-11-02 A | 2011-11-03 A | 29 | 100% |  | JP | 16h | 16h |
| 31 | 2.4.10 | New tag (RC4) for 1.3.1 |  | 1d | 2011-11-04 A | 2011-11-04 A | 30 | 100% |  | JP | 8h | 8h |
| 32 | 2.5 | QA RC4 |  | 6d | 2011-11-07 A | 2011-11-15 A | 21 | 100% |  | HS [114.3%] | 54.86h | 54.86h |
| 33 | 2.6 | Release - Stage/QA/Appscan/Prod/QA |  | 8d | 2011-11-16 A | 2011-11-29 A | 32 | 100% |  | Systems | 64h | 64h |

| ID | WBS | Task | Duration | Start | Finish | Predecessors | Complete | Remaining | Total slack | Free slack | Constraint | Resources | Work | Actual work |
| --- | --- | --- | --- | --- | --- | --- | --- | --- | --- | --- | --- | --- | --- | --- |
| 34 | 3 | **CaIntegrator Version 1.4** | 151d? | 2011-08-01 A | 2012-03-05 |  | 42% | 87.72d? | 112d |  |  |  | 1664h | 758.4h |
| 35 | 3.1 | Version 1.4 planning/priortization | 2d | 2011-08-01 A | 2011-08-02 A |  | 100% |  |  |  |  |  |  |  |
| 36 | 3.2 | **JIRA CAINT-1015 Tech Stack Upgrade** | 93d | 2011-08-03 A | 2011-12-15 | 35 | 89% | 10.15d | 149d |  |  |  | 528h | 470.4h |
| 37 | 3.2.1 | Planning | 2d | 2011-08-03 A | 2011-08-04 A |  | 100% |  |  |  |  | JP | 16h | 16h |
| 38 | 3.2.2 | CI to Jenkins | 2d | 2011-09-07 A | 2011-09-08 A | 37, 59 | 100% |  |  |  |  | JP | 16h | 16h |
| 39 | 3.2.3 | ANT 1.8 | 3d | 2011-09-09 A | 2011-09-13 A | 38 | 100% |  |  |  |  | JP | 24h | 24h |
| 40 | 3.2.4 | Support for Version 1.3.1 RC1 | 2d | 2011-09-20 A | 2011-09-21 A | 18 | 100% |  |  |  |  | JP | 16h | 16h |
| 41 | 3.2.5 | JIRA CAINT-1055 Migration from nexus | 9d | 2011-10-06 A | 2011-10-18 A | 39 | 100% |  |  |  |  | MAX | 72h | 72h |
| 42 | 3.2.6 | JIRA CAINT-1058 Implement Artifact Configuration | 9d | 2011-10-26 A | 2011-11-07 A | 41 | 100% |  |  |  |  | MAX | 72h | 72h |
| 43 | 3.2.7 | JIRA CAINT-(1065,1070) Bugs, JBOSS vulnerability and resolve, IE issue | 14d | 2011-11-07 A | 2011-11-29 A | 31 | 100% |  |  |  |  | JP | 112h | 112h |
| 44 | 3.2.8 | JIRA CAINT-(1059,1012) PTE form, JBOSS upgrade | 8d | 2011-11-08 A | 2011-11-18 A | 42 | 100% |  |  |  |  | MAX | 64h | 64h |
| 45 | 3.2.9 | JIRA CAINT(1060,1061, 1010) build track setup Anthill Pro 3, Jenkins CI, Test | 15d | 2011-11-21 A | 2011-12-13 | 44 | 65% | 5.2d | 149d | 0d |  | MAX | 120h | 78.4h |
| 46 | 3.2.10 | JIRA CAINT1071 retirement of scm-private repository - reconfigure tier builds | 2d | 2011-12-14 | 2011-12-15 | 45 |  |  | 149d | 0d |  | MAX | 16h |  |
| 47 | 3.3 | **TRANSCEND Support** | 54d? | 2011-10-25 A | 2012-01-12 |  | 44% | 30.38d? | 149d |  |  |  | 384h | 168h |
| 48 | 3.3.1 | Refine requirements for permission model | 3d | 2011-10-25 A | 2011-10-27 A |  | 100% |  |  |  | start no earlier than 2011-10-25 | SJ | 24h | 24h |
| 49 | 3.3.2 | Create wireframe for permission model | 2d | 2011-10-28 A | 2011-10-31 A | 48 | 100% |  |  |  |  | Andy | 16h | 16h |
| 50 | 3.3.3 | Demo (internal team) wireframe for permission model | 1d? | 2011-11-01 A | 2011-11-01 A | 49 | 100% |  |  |  |  | WF | 8h | 8h |
| 51 | 3.3.4 | Discussion to finalize the requirements with TRANSCEND (for permissions) | 6d | 2011-11-02 A | 2011-11-09 A | 50 | 100% |  |  |  |  | SJ | 48h | 48h |
| 52 | 3.3.5 | Finalize Archive User Stories | 6d | 2011-11-22 A | 2011-12-01 A |  | 100% |  |  |  | start no earlier than 2011-11-22 | SJ | 48h | 48h |
| 53 | 3.3.6 | Permission Model - discussion and documentation | 3d | 2011-12-08 A | 2011-12-12 A |  | 100% |  |  |  | start no earlier than 2011-12-08 | JP | 24h | 24h |
| 54 | 3.3.7 | Meet with UCSF with sample data and finalize need | 3d | 2011-12-13 | 2011-12-15 | 53 |  |  | 168d |  | start no earlier than 2011-12-06 | SJ | 24h |  |
| 55 | 3.3.8 | JIRA CAINT-1078 TRANSCEND - authorization user story CSM investigation | 5d | 2011-12-13 | 2011-12-19 | 68, 53 |  |  | 161d | 0d |  | JP | 40h |  |
| 56 | 3.3.9 | JIRA CAINT-998 -Version control (create shell study) | 14d | 2011-12-16 | 2012-01-05 | 46 |  |  | 149d | 0d |  | MAX | 112h |  |
| 57 | 3.3.10 | JIRA CAINT-998 Version control (Archive) | 5d | 2012-01-06 | 2012-01-12 | 56 |  |  | 149d |  |  | MAX | 40h |  |

| ID | WBS | Task | Duration | Start | Finish | Predecessors | Complete | Remaining | Total slack | Free slack | Constraint | Resources | Work | Actual work |
| --- | --- | --- | --- | --- | --- | --- | --- | --- | --- | --- | --- | --- | --- | --- |
| 58 | 3.4 | **Ongoing maintenance and bug fixes** | 109d? | 2011-08-31 A | 2012-02-06 |  | 18% | 89.76d? | 132d |  |  |  | 672h | 120h |
| 59 | 3.4.1 | ADF platform issues | 2d | 2011-08-31 A | 2011-09-01 A |  | 100% |  |  |  | start no earlier than 2011-08-31 | JP | 16h | 16h |
| 60 | 3.4.2 | Data issues with training tier | 3d | 2011-09-23 A | 2011-09-27 A |  | 100% |  |  |  | start no earlier than 2011-09-23 | JP | 24h | 24h |
| 61 | 3.4.3 | Xenoline Requirements Gathering | 10d | 2011-11-07 A | 2011-11-21 A |  | 100% |  |  |  | start no earlier than 2011-11-07 | SJ | 80h | 80h |
| 62 | 3.4.4 | Xenoline Data update information | 1d? | 2011-12-14 | 2011-12-14 |  |  |  | 153d | 0d | start no earlier than 2011-12-14 |  |  |  |
| 63 | 3.4.5 | Xenoline ARC document | 4d | 2011-12-15 | 2011-12-20 | 62 |  |  | 158d | 0d | start no earlier than 2011-12-01 | SJ | 32h |  |
| 64 | 3.4.6 | Xenoline setup server/ftp site | 7d | 2011-12-21 | 2011-12-30 | 63 |  |  | 158d |  |  | Coung/Systems | 56h |  |
| 65 | 3.4.7 | caDSR requirements for caIntegrator (Meeting with Denise) | 4d | 2011-12-14 | 2011-12-19 |  |  |  | 161d | 0d | start no earlier than 2011-12-14 | SJ | 32h |  |
| 66 | 3.4.8 | caDSR implementation based on new requirements | 5d | 2011-12-20 | 2012-01-03 | 55, 65 |  |  | 156d |  |  | JP | 40h |  |
| 67 | 3.4.9 | JIRA CAINT-1075 Error on copyNumber data deployments | 3d | 2011-11-30 | 2011-12-02 | 43 |  |  | 164d | 0d |  | JP | 24h |  |
| 68 | 3.4.10 | JIRA CAINT-986 Integration with IGV 2.0 | 3d | 2011-12-05 | 2011-12-07 | 67 |  |  | 164d | 3d |  | JP | 24h |  |
| 69 | 3.4.11 | **JIRA-CAINT-966 - Generic Platform Support** | 48d | 2011-11-30 | 2012-02-06 |  |  |  | 0d |  |  |  | 344h |  |
| 70 | 3.4.11.1 | Create new generic platform model by extending expression platform. | 8d | 2011-11-30 | 2011-12-09 | 43 |  |  | 0d |  |  | JP | 64h |  |
| 71 | 3.4.11.2 | Modify the generic platform loader to accept MAGE-TAB. | 5d | 2011-12-12 | 2011-12-16 | 70 |  |  | 0d |  |  | JP | 40h |  |
| 72 | 3.4.11.3 | Modify the study deployment process to load the new platform data from caArray. | 8d | 2011-12-19 | 2012-01-05 | 71 |  |  | 0d |  |  | JP | 64h |  |
| 73 | 3.4.11.4 | modify front-end analysis tools to show a new title according to platform type. | 3d | 2012-01-06 | 2012-01-10 | 72 |  |  | 0d |  |  | JP | 24h |  |
| 74 | 3.4.11.5 | Modify the Query interface to allow selection of a generic expression data type. | 14d | 2012-01-11 | 2012-01-30 | 73 |  |  | 0d |  |  | JP | 112h |  |
| 75 | 3.4.11.6 | Modify front-end for IGV and heatmap to display a selector for choosing a generic expression data type. | 5d | 2012-01-31 | 2012-02-06 | 74 |  |  | 0d |  |  | JP | 40h |  |
| 76 | 3.5 | QA | 10d | 2012-02-07 | 2012-02-20 | 69 |  |  | 0d |  |  | HS | 80h |  |
| 77 | 3.6 | Documentation | 10d | 2012-02-07 | 2012-02-20 | 69 |  |  | 122d |  |  |  |  |  |
| 78 | 3.7 | Appscan/Stage/Prod release | 10d | 2012-02-21 | 2012-03-05 | 76 |  |  | 112d |  |  |  |  |  |
| 79 | 4 | **CaIntegrator Version 1.5** | 263d? | 2011-08-01 | 2012-08-08 |  |  |  | 0d |  |  |  | 1280h |  |
| 80 | 4.1 | Version 1.5 planning/priortization | 2d | 2012-02-21 | 2012-02-22 | 76 |  |  | 0d |  |  |  |  |  |
| 81 | 4.2 | **TRANSCEND Support** | 223d? | 2011-08-01 | 2012-06-13 |  |  |  | 40d |  |  |  | 1120h |  |
| 82 | 4.2.1 | JIRA CAINT-998 - TRANSCEND Permissions Support | 40d | 2012-02-23 | 2012-04-18 | 80 |  |  | 0d |  |  | JP | 320h |  |
| 83 | 4.2.2 | JIRA CAINT-998 Automatic Refresh | 40d | 2012-02-23 | 2012-04-18 | 80 |  |  | 60d | 0d |  | TBH | 320h |  |
| 84 | 4.2.3 | JIRA CAINT-998 Single Sign-on | 40d | 2012-04-19 | 2012-06-13 | 82 |  |  | 0d |  |  | TBH | 320h |  |
| 85 | 4.2.4 | JIRA CAINT-49 Integrate with private studies in NBIA | 20d | 2012-04-19 | 2012-05-16 | 83 |  |  | 60d |  |  | JP | 160h |  |
| 86 | 4.2.5 | JIRA CAINT-1045 Performance Requirements | 1d? | 2011-08-01 | 2011-08-01 |  |  |  | 257d |  |  |  |  |  |
| 87 | 4.3 | JIRA CAINT-1041 - Support NCI Funded Studies Deployment | 20d | 2012-06-14 | 2012-07-11 | 84 |  |  | 0d |  |  | TBH | 160h |  |
| 88 | 4.4 | QA | 20d | 2012-07-12 | 2012-08-08 | 87 |  |  | 0d |  |  |  |  |  |
| 89 | 4.5 | Documentation | 10d | 2012-07-12 | 2012-07-25 | 87 |  |  | 0d |  |  |  |  |  |
| 90 | 4.6 | Appscan/Stage/Prod release | 10d | 2012-07-26 | 2012-08-08 | 89 |  |  | 0d |  |  |  |  |  |
